# Project_surajfinal

Schedule from MS Project, 2022-11-21 to 2023-02-28, costs in $.

## Calendars

- Company Anniversary: Mon-Fri 08:00-12:00, 13:00-17:00; Sat-Sun off. Exceptions (off unless hours are given): 2022-12-08 (Memorial Day, recurring), 2023-01-05 to 2024-01-05 (Office Picnic, recurring), 2023-01-07 08:00-12:00, 13:00-17:00, 2023-01-16 to 2033-01-16 (Labor Day, recurring), 2023-02-19 08:00-12:00, 13:00-17:00, 2023-02-21 (Independence Day, recurring).

## Resources

| Resource | Rate |
| --- | --- |
| Project Manager | 140 |
| Logistics Manager | 120 |
| IT Manager | 100 |
| Logo Designer | 20 |
| Disc Jockey (DJ) | 40 |
| (JP-EN) Interpreter | 60 |
| Gift Designer | 20 |
| Reception Hall | 1000 |
| Banner | 200 |
| Audio/Visual Equipment | 150 |
| Gifts | 50 |
| Catering Service |  |
| PhotoBooth Service |  |
| Photography Service |  |
| Hotel |  |
| Transportation Service |  |

## Schedule

| ID | WBS | Task | Type | Duration | Start | Finish | Predecessors | Total slack | Constraint | Resources | Work | Cost |
| --- | --- | --- | --- | --- | --- | --- | --- | --- | --- | --- | --- | --- |
| 1 | 1 | **COMPANY ANNIVERSARY** |  | 70d | 2022-11-21 | 2023-02-28 |  |  |  |  | 648h | 88,280 |
| 2 | 1.1 | **INITIATION PHASE** |  | 5d | 2022-11-21 | 2022-11-26 |  | 0d |  |  | 112h | 14,560 |
| 3 | 1.1.1 | Agree on budget and event scope | manual | 4d | 2022-11-21 | 2022-11-24 |  |  |  | Logistics Manager; Project Manager | 64h | 8,320 |
| 4 | 1.1.2 | Fix a date and time for the event | manual | 2d | 2022-11-24 | 2022-11-25 |  |  |  | Logistics Manager; Project Manager | 32h | 4,160 |
| 5 | 1.1.3 | Anniversary date set | milestone, manual | 1d | 2022-11-26 | 2022-11-26 |  |  |  | Logistics Manager; Project Manager | 16h | 2,080 |
| 6 | 1.2 | **PREPARATION PHASE** |  | 58d | 2022-11-27 | 2023-02-16 | 2 |  |  |  | 472h | 67,480 |
| 7 | 1.2.1 | **GUESTS** |  | 21d | 2022-11-26 | 2022-12-26 |  |  |  |  | 216h | 28,480 |
| 8 | 1.2.1.1 | Make Guest list | manual | 5d | 2022-11-26 | 2022-12-01 |  |  |  | Project Manager | 40h | 5,600 |
| 9 | 1.2.1.2 | Send out invitations | manual | 5d | 2022-12-02 | 2022-12-09 | 8SS+4d |  |  |  |  |  |
| 10 | 1.2.1.3 | Finalize Guest list |  | 10d | 2022-12-09 | 2022-12-22 | 9FF | 0d | start no earlier than 2022-12-09 | Logistics Manager; Project Manager | 160h | 20,800 |
| 11 | 1.2.1.4 | Number of guests confirmed | milestone, manual | 1d | 2022-12-22 | 2022-12-22 |  |  |  | Logistics Manager; Project Manager | 16h | 2,080 |
| 12 | 1.2.2 | **RECEPTION VENUE** |  | 6d | 2022-12-27 | 2023-01-03 | 7 |  |  |  | 72h | 9,120 |
| 13 | 1.2.2.1 | Make reception venue short list | manual | 3d | 2022-12-23 | 2022-12-27 |  |  |  | IT Manager; Project Manager | 48h | 5,760 |
| 14 | 1.2.2.2 | Reception venue validated | milestone, manual | 2d | 2022-12-30 | 2023-01-02 |  |  |  | Project Manager | 16h | 2,240 |
| 15 | 1.2.2.3 | Book reception venue | manual | 1d | 2023-01-03 | 2023-01-03 |  |  |  | Project Manager | 8h | 1,120 |
| 16 | 1.2.3 | **CATERING** |  | 3d | 2023-01-04 | 2023-01-07 | 12 |  |  |  | 32h | 6,160 |
| 17 | 1.2.3.1 | Make caterer short list | manual | 1d | 2023-01-04 | 2023-01-04 |  |  |  | Logistics Manager; Project Manager | 16h | 2,080 |
| 18 | 1.2.3.2 | Validate the caterer with management | manual | 1d | 2023-01-06 | 2023-01-06 | 17 |  |  | Catering Service [0.1%] |  | 2,000 |
| 19 | 1.2.3.3 | Plan food menu |  | 1d | 2023-01-07 | 2023-01-07 | 18 | 36d | start no earlier than 2023-01-07 | Logistics Manager; Project Manager | 16h | 2,080 |
| 20 | 1.2.4 | **DECOR** |  | 12d | 2022-12-14 | 2022-12-29 | 2 |  |  |  | 56h | 2,120 |
| 21 | 1.2.4.1 | Create Anniversary logo design |  | 7d | 2022-12-15 | 2022-12-23 |  | 0d | start no earlier than 2022-12-15 | Logo Designer | 56h | 1,120 |
| 22 | 1.2.4.2 | Print Anniversary banners |  | 7d | 2022-12-21 | 2022-12-29 | 21SS+4d | 0d |  | Banner [500%] |  | 1,000 |
| 23 | 1.2.5 | **ANIMATION** |  | 3d | 2023-01-06 | 2023-01-09 |  | 0d |  |  | 64h | 6,350 |
| 24 | 1.2.5.1 | Select and book DJ | manual | 2d | 2023-01-06 | 2023-01-07 |  |  |  | IT Manager | 16h | 1,600 |
| 25 | 1.2.5.2 | Select and book entertainment | manual | 3d | 2023-01-06 | 2023-01-09 |  |  |  | IT Manager | 24h | 2,400 |
| 26 | 1.2.5.3 | Create DJ Theme and Music | manual | 1d | 2023-01-06 | 2023-01-06 |  |  |  | Disc Jockey (DJ) | 8h | 320 |
| 27 | 1.2.5.4 | Book Japanese-English interpreter | manual | 1d | 2023-01-06 | 2023-01-06 |  |  |  | IT Manager | 8h | 800 |
| 28 | 1.2.5.5 | Create Script of Japanese-English Translation | manual | 1d | 2023-01-06 | 2023-01-06 |  |  |  | (JP-EN) Interpreter | 8h | 480 |
| 29 | 1.2.5.6 | Select and book audiovisual equipment | manual | 1d | 2023-01-06 | 2023-01-06 |  |  |  | Audio/Visual Equipment [500%] |  | 750 |

| ID | WBS | Task | Type | Duration | Start | Finish | Predecessors | Total slack | Free slack | Constraint | Deadline | Resources | Work | Cost |
| --- | --- | --- | --- | --- | --- | --- | --- | --- | --- | --- | --- | --- | --- | --- |
| 30 | 1.2.6 | **GIFT** |  | 0d | 2022-11-27 | 2022-11-27 |  | 0d |  |  |  |  | 32h | 2,750 |
| 31 | 1.2.6.1 | Choose Gift type | manual | 1d | 2022-11-27 | 2022-11-27 |  |  |  |  |  | Logistics Manager; Project Manager | 16h | 2,080 |
| 32 | 1.2.6.2 | Design Original Gift | manual | 1d | 2022-11-27 | 2022-11-27 |  |  |  |  |  | Gift Designer | 8h | 160 |
| 33 | 1.2.6.3 | Produce Original Gift | manual | 1d | 2022-11-27 | 2022-11-27 |  |  |  |  |  | Gifts [700%] |  | 350 |
| 34 | 1.2.6.4 | Original Gift checked | milestone, manual | 1d | 2022-11-27 | 2022-11-27 |  |  |  |  |  | Gift Designer | 8h | 160 |
| 35 | 1.2.7 | **VIP GUEST** |  | 8d | 2022-12-23 | 2023-01-03 |  |  |  |  |  |  |  | 11,500 |
| 36 | 1.2.7.1 | Select and book hotel rooms |  | 4d | 2022-12-23 | 2022-12-28 | 10 | 0d |  |  |  | Reception Hall [700%]; Hotel [0.1%] |  | 10,000 |
| 37 | 1.2.7.2 | Select and book transport |  | 4d | 2022-12-29 | 2023-01-03 | 36 | 0d |  |  |  | Transportation Service [0.1%] |  | 1,500 |
| 38 | 1.2.8 | **MEMORIES** |  | 9d | 2023-02-06 | 2023-02-16 |  |  |  |  |  |  |  | 1,000 |
| 39 | 1.2.8.1 | Select and book photographer | manual | 4d | 2023-02-06 | 2023-02-09 |  |  |  |  |  | Photography Service [0.1%] |  | 500 |
| 40 | 1.2.8.2 | Select and order a photo booth |  | 5d | 2023-02-10 | 2023-02-16 | 39 | 0d |  |  |  | PhotoBooth Service [0.1%] |  | 500 |
| 41 | 1.3 | **REHEARSAL PHASE** |  | 7d? | 2023-02-17 | 2023-02-27 |  | 0d |  |  |  |  | 64h | 6,240 |
| 42 | 1.3.1 | Bring all equipment to the venu |  | 1d? | 2023-02-17 | 2023-02-17 | 6 | 5d | 1d |  |  | IT Manager; Logistics Manager; Project Manager | 24h | 2,880 |
| 43 | 1.3.2 | Have a rehearsal |  | 1d | 2023-02-20 | 2023-02-20 | 42 | 4d | 3d | start no earlier than 2023-02-20 |  | Disc Jockey (DJ); Gift Designer; IT Manager; Logistics Manager; Project Manager | 40h | 3,360 |
| 44 | 1.3.3 | Event day | milestone, manual | 1d | 2023-02-27 | 2023-02-27 | 43 |  |  |  | 2023-02-28 |  |  |  |
